# Software Development Plan

Schedule from MS Project MPX, 2023-04-27 to 2023-09-07.

## Calendars

- Standard: Mon-Fri 08:00 am-12:00 pm, 01:00 pm-05:00 pm; Sat-Sun off.

## Resources

| Resource |
| --- |
| Management |
| Project Manager |
| Analyst |
| Developer |
| Testers |
| Trainers |
| Technical Communicators |
| Deployment Team |

## Schedule

| ID | WBS | Task | Type | Duration | Start | Finish | Predecessors | Baseline start | Baseline finish | Resources |
| --- | --- | --- | --- | --- | --- | --- | --- | --- | --- | --- |
| 1 | 1 | **Scope** |  | 3.5d | 2023-04-27 | 2023-05-02 |  | 2023-04-27 | 2023-05-02 |  |
| 2 | 1.1 | Determine project scope |  | 4h | 2023-04-27 | 2023-04-27 |  | 2023-04-27 | 2023-04-27 | Management |
| 3 | 1.2 | Prueba de edición |  | 1d | 2023-04-27 | 2023-04-28 | 2 | 2023-04-27 | 2023-04-28 | Management |
| 4 | 1.3 | Define preliminary resources |  | 1d | 2023-04-28 | 2023-05-01 | 3 | 2023-04-28 | 2023-05-01 | Project Manager |
| 5 | 1.4 | Secure core resources |  | 1d | 2023-05-01 | 2023-05-02 | 4 | 2023-05-01 | 2023-05-02 | Project Manager |
| 6 | 1.5 | Scope complete | milestone | 0d | 2023-05-02 | 2023-05-02 | 5 | 2023-05-02 | 2023-05-02 |  |
| 7 | 2 | **Analysis/Software Requirements** |  | 14d | 2023-05-02 | 2023-05-22 |  | 2023-05-02 | 2023-05-22 |  |
| 8 | 2.1 | Conduct needs analysis |  | 5d | 2023-05-02 | 2023-05-09 | 6 | 2023-05-02 | 2023-05-09 | Analyst |
| 9 | 2.2 | Draft preliminary software specifications |  | 3d | 2023-05-09 | 2023-05-12 | 8 | 2023-05-09 | 2023-05-12 | Analyst |
| 10 | 2.3 | Develop preliminary budget |  | 2d | 2023-05-12 | 2023-05-16 | 9 | 2023-05-12 | 2023-05-16 | Project Manager |
| 11 | 2.4 | Review software specifications/budget with team |  | 4h | 2023-05-16 | 2023-05-16 | 10 | 2023-05-16 | 2023-05-16 | Project Manager; Analyst |
| 12 | 2.5 | Incorporate feedback on software specifications |  | 1d | 2023-05-17 | 2023-05-17 | 11 | 2023-05-17 | 2023-05-17 | Analyst |
| 13 | 2.6 | Develop delivery timeline |  | 1d | 2023-05-18 | 2023-05-18 | 12 | 2023-05-18 | 2023-05-18 | Project Manager |
| 14 | 2.7 | Obtain approvals to proceed (concept, timeline, budget) |  | 4h | 2023-05-19 | 2023-05-19 | 13 | 2023-05-19 | 2023-05-19 | Management; Project Manager |
| 15 | 2.8 | Secure required resources |  | 1d | 2023-05-19 | 2023-05-22 | 14 | 2023-05-19 | 2023-05-22 | Project Manager |
| 16 | 2.9 | Analysis complete | milestone | 0d | 2023-05-22 | 2023-05-22 | 15 | 2023-05-22 | 2023-05-22 |  |
| 17 | 3 | **Design** |  | 14.5d | 2023-05-22 | 2023-06-09 |  | 2023-05-22 | 2023-06-09 |  |
| 18 | 3.1 | Review preliminary software specifications |  | 2d | 2023-05-22 | 2023-05-24 | 16 | 2023-05-22 | 2023-05-24 | Analyst |
| 19 | 3.2 | Develop functional specifications |  | 5d | 2023-05-24 | 2023-05-31 | 18 | 2023-05-24 | 2023-05-31 | Analyst |
| 20 | 3.3 | Develop prototype based on functional specifications |  | 4d | 2023-05-31 | 2023-06-06 | 19 | 2023-05-31 | 2023-06-06 | Analyst |
| 21 | 3.4 | Review functional specifications |  | 2d | 2023-06-06 | 2023-06-08 | 20 | 2023-06-06 | 2023-06-08 | Management |
| 22 | 3.5 | Incorporate feedback into functional specifications |  | 1d | 2023-06-08 | 2023-06-09 | 21 | 2023-06-08 | 2023-06-09 | Management |
| 23 | 3.6 | Obtain approval to proceed |  | 4h | 2023-06-09 | 2023-06-09 | 22 | 2023-06-09 | 2023-06-09 | Management; Project Manager |
| 24 | 3.7 | Design complete | milestone | 0d | 2023-06-09 | 2023-06-09 | 23 | 2023-06-09 | 2023-06-09 |  |

| ID | WBS | Task | Type | Duration | Start | Finish | Predecessors | Baseline start | Baseline finish | Resources |
| --- | --- | --- | --- | --- | --- | --- | --- | --- | --- | --- |
| 25 | 4 | **Development** |  | 21.75d | 2023-06-12 | 2023-07-11 |  | 2023-06-12 | 2023-07-11 |  |
| 26 | 4.1 | Review functional specifications |  | 1d | 2023-06-12 | 2023-06-12 | 24 | 2023-06-12 | 2023-06-12 | Developer |
| 27 | 4.2 | Identify modular/tiered design parameters |  | 1d | 2023-06-13 | 2023-06-13 | 26 | 2023-06-13 | 2023-06-13 | Developer |
| 28 | 4.3 | Assign development staff |  | 1d | 2023-06-14 | 2023-06-14 | 27 | 2023-06-14 | 2023-06-14 | Developer |
| 29 | 4.4 | Develop code |  | 15d | 2023-06-15 | 2023-07-05 | 28 | 2023-06-15 | 2023-07-05 | Developer |
| 30 | 4.5 | Developer testing (primary debugging) |  | 15d | 2023-06-20 | 2023-07-11 | 29 | 2023-06-20 | 2023-07-11 | Developer |
| 31 | 4.6 | Development complete | milestone | 0d | 2023-07-11 | 2023-07-11 | 30 | 2023-07-11 | 2023-07-11 |  |
| 32 | 5 | **Testing** |  | 48.75d | 2023-06-12 | 2023-08-17 |  | 2023-06-12 | 2023-08-17 |  |
| 33 | 5.1 | Develop unit test plans using product specifications |  | 4d | 2023-06-12 | 2023-06-15 | 24 | 2023-06-12 | 2023-06-15 | Testers |
| 34 | 5.2 | Develop integration test plans using product specifications |  | 4d | 2023-06-12 | 2023-06-15 | 24 | 2023-06-12 | 2023-06-15 | Testers |
| 35 | 5.3 | **Unit Testing** |  | 15d | 2023-07-11 | 2023-08-01 |  | 2023-07-11 | 2023-08-01 |  |
| 36 | 5.3.1 | Review modular code |  | 5d | 2023-07-11 | 2023-07-18 | 33, 31 | 2023-07-11 | 2023-07-18 | Testers |
| 37 | 5.3.2 | Test component modules to product specifications |  | 2d | 2023-07-18 | 2023-07-20 | 31, 36 | 2023-07-18 | 2023-07-20 | Testers |
| 38 | 5.3.3 | Identify anomalies to product specifications |  | 3d | 2023-07-20 | 2023-07-25 | 37 | 2023-07-20 | 2023-07-25 | Testers |
| 39 | 5.3.4 | Modify code |  | 3d | 2023-07-25 | 2023-07-28 | 38 | 2023-07-25 | 2023-07-28 | Testers |
| 40 | 5.3.5 | Re-test modified code |  | 2d | 2023-07-28 | 2023-08-01 | 39 | 2023-07-28 | 2023-08-01 | Testers |
| 41 | 5.3.6 | Unit testing complete | milestone | 0d | 2023-08-01 | 2023-08-01 | 40 | 2023-08-01 | 2023-08-01 |  |
| 42 | 5.4 | **Integration Testing** |  | 12d | 2023-08-01 | 2023-08-17 |  | 2023-08-01 | 2023-08-17 |  |
| 43 | 5.4.1 | Test module integration |  | 5d | 2023-08-01 | 2023-08-08 | 41 | 2023-08-01 | 2023-08-08 | Testers |
| 44 | 5.4.2 | Identify anomalies to specifications |  | 2d | 2023-08-08 | 2023-08-10 | 43 | 2023-08-08 | 2023-08-10 | Testers |
| 45 | 5.4.3 | Modify code |  | 3d | 2023-08-10 | 2023-08-15 | 44 | 2023-08-10 | 2023-08-15 | Testers |
| 46 | 5.4.4 | Re-test modified code |  | 2d | 2023-08-15 | 2023-08-17 | 45 | 2023-08-15 | 2023-08-17 | Testers |
| 47 | 5.4.5 | Integration testing complete | milestone | 0d | 2023-08-17 | 2023-08-17 | 46 | 2023-08-17 | 2023-08-17 |  |
| 48 | 6 | **Training** |  | 45.75d | 2023-06-12 | 2023-08-14 |  | 2023-06-12 | 2023-08-14 |  |
| 49 | 6.1 | Develop training specifications for end users |  | 3d | 2023-06-12 | 2023-06-14 | 24 | 2023-06-12 | 2023-06-14 | Trainers |
| 50 | 6.2 | Develop training specifications for helpdesk support staff |  | 3d | 2023-06-12 | 2023-06-14 | 24 | 2023-06-12 | 2023-06-14 | Trainers |
| 51 | 6.3 | Identify training delivery methodology (computer based training, classroom, etc.) |  | 2d | 2023-06-12 | 2023-06-13 | 24 | 2023-06-12 | 2023-06-13 | Trainers |
| 52 | 6.4 | Develop training materials |  | 3w | 2023-07-11 | 2023-08-01 | 49, 31, 50, 51 | 2023-07-11 | 2023-08-01 | Trainers |
| 53 | 6.5 | Conduct training usability study |  | 4d | 2023-08-01 | 2023-08-07 | 52 | 2023-08-01 | 2023-08-07 | Trainers |
| 54 | 6.6 | Finalize training materials |  | 3d | 2023-08-07 | 2023-08-10 | 53 | 2023-08-07 | 2023-08-10 | Trainers |
| 55 | 6.7 | Develop training delivery mechanism |  | 2d | 2023-08-10 | 2023-08-14 | 54 | 2023-08-10 | 2023-08-14 | Trainers |
| 56 | 6.8 | Training materials complete | milestone | 0d | 2023-08-14 | 2023-08-14 | 55 | 2023-08-14 | 2023-08-14 |  |

| ID | WBS | Task | Type | Duration | Start | Finish | Predecessors | Baseline start | Baseline finish | Resources |
| --- | --- | --- | --- | --- | --- | --- | --- | --- | --- | --- |
| 57 | 7 | **Documentation** |  | 30.5d | 2023-06-12 | 2023-07-24 |  | 2023-06-12 | 2023-07-24 |  |
| 58 | 7.1 | Develop Help specification |  | 1d | 2023-06-12 | 2023-06-12 | 24 | 2023-06-12 | 2023-06-12 | Technical Communicators |
| 59 | 7.2 | Develop Help system |  | 3w | 2023-06-26 | 2023-07-17 | 58, 29 | 2023-06-26 | 2023-07-17 | Technical Communicators |
| 60 | 7.3 | Review Help documentation |  | 3d | 2023-07-17 | 2023-07-20 | 59 | 2023-07-17 | 2023-07-20 | Technical Communicators |
| 61 | 7.4 | Incorporate Help documentation feedback |  | 2d | 2023-07-20 | 2023-07-24 | 60 | 2023-07-20 | 2023-07-24 | Technical Communicators |
| 62 | 7.5 | Develop user manuals specifications |  | 2d | 2023-06-12 | 2023-06-13 | 24 | 2023-06-12 | 2023-06-13 | Technical Communicators |
| 63 | 7.6 | Develop user manuals |  | 3w | 2023-06-26 | 2023-07-17 | 62, 29 | 2023-06-26 | 2023-07-17 | Technical Communicators |
| 64 | 7.7 | Review all user documentation |  | 2d | 2023-07-17 | 2023-07-19 | 63 | 2023-07-17 | 2023-07-19 | Technical Communicators |
| 65 | 7.8 | Incorporate user documentation feedback |  | 2d | 2023-07-19 | 2023-07-21 | 64 | 2023-07-19 | 2023-07-21 | Technical Communicators |
| 66 | 7.9 | Documentation complete | milestone | 0d | 2023-07-24 | 2023-07-24 | 65, 61 | 2023-07-24 | 2023-07-24 |  |
| 67 | 8 | **Pilot** |  | 70.25d | 2023-05-22 | 2023-08-28 |  | 2023-05-22 | 2023-08-28 |  |
| 68 | 8.1 | Identify test group |  | 1d | 2023-05-22 | 2023-05-23 | 16 | 2023-05-22 | 2023-05-23 | Project Manager |
| 69 | 8.2 | Develop software delivery mechanism |  | 1d | 2023-05-23 | 2023-05-24 | 68 | 2023-05-23 | 2023-05-24 |  |
| 70 | 8.3 | Install/deploy software |  | 1d | 2023-08-17 | 2023-08-18 | 47, 69, 66, 56 | 2023-08-17 | 2023-08-18 | Deployment Team |
| 71 | 8.4 | Obtain user feedback |  | 1w | 2023-08-18 | 2023-08-25 | 70 | 2023-08-18 | 2023-08-25 | Deployment Team |
| 72 | 8.5 | Evaluate testing information |  | 1d | 2023-08-25 | 2023-08-28 | 71 | 2023-08-25 | 2023-08-28 | Deployment Team |
| 73 | 8.6 | Pilot complete | milestone | 0d | 2023-08-28 | 2023-08-28 | 72 | 2023-08-28 | 2023-08-28 |  |
| 74 | 9 | **Deployment** |  | 5d | 2023-08-28 | 2023-09-04 |  | 2023-08-28 | 2023-09-04 |  |
| 75 | 9.1 | Determine final deployment strategy |  | 1d | 2023-08-28 | 2023-08-29 | 73 | 2023-08-28 | 2023-08-29 | Deployment Team |
| 76 | 9.2 | Develop deployment methodology |  | 1d | 2023-08-29 | 2023-08-30 | 75 | 2023-08-29 | 2023-08-30 | Deployment Team |
| 77 | 9.3 | Secure deployment resources |  | 1d | 2023-08-30 | 2023-08-31 | 76 | 2023-08-30 | 2023-08-31 | Deployment Team |
| 78 | 9.4 | Train support staff |  | 1d | 2023-08-31 | 2023-09-01 | 77 | 2023-08-31 | 2023-09-01 | Deployment Team |
| 79 | 9.5 | Deploy software |  | 1d | 2023-09-01 | 2023-09-04 | 78 | 2023-09-01 | 2023-09-04 | Deployment Team |
| 80 | 9.6 | Deployment complete | milestone | 0d | 2023-09-04 | 2023-09-04 | 79 | 2023-09-04 | 2023-09-04 |  |

| ID | WBS | Task | Type | Duration | Start | Finish | Predecessors | Baseline start | Baseline finish | Resources |
| --- | --- | --- | --- | --- | --- | --- | --- | --- | --- | --- |
| 81 | 10 | **Post Implementation Review** |  | 3d | 2023-09-04 | 2023-09-07 |  | 2023-09-04 | 2023-09-07 |  |
| 82 | 10.1 | Document lessons learned |  | 1d | 2023-09-04 | 2023-09-05 | 80 | 2023-09-04 | 2023-09-05 | Project Manager |
| 83 | 10.2 | Distribute to team members |  | 1d | 2023-09-05 | 2023-09-06 | 82 | 2023-09-05 | 2023-09-06 | Project Manager |
| 84 | 10.3 | Create software maintenance team |  | 1d | 2023-09-06 | 2023-09-07 | 83 | 2023-09-06 | 2023-09-07 | Project Manager |
| 85 | 10.4 | Post implementation review complete | milestone | 0d | 2023-09-07 | 2023-09-07 | 84 | 2023-09-07 | 2023-09-07 |  |
| 86 | 11 | Software development template complete | milestone | 0d | 2023-09-07 | 2023-09-07 | 85 | 2023-09-07 | 2023-09-07 |  |
